Schedule from MS Project, 2024-02-01 to 2024-05-20, costs in р..
Microsoft

## Calendars

- Стандартный: Mon-Fri 09:00-13:00, 14:00-18:00; Sat off; Sun 09:00-13:00, 14:00-18:00.

## Resources

| Resource | Unit | Rate | Cost per use |
| --- | --- | --- | --- |
| Слесарь-водопроводчик |  | 1250 | 20000 |
| Штукатур |  | 1000 |  |
| Подсобник |  | 500 |  |
| Плиточник |  | 1875 |  |
| Плотник |  | 1875 |  |
| АО «Светлый потолок» |  | 1250 |  |
| Унитаз-компакт | шт | 150000 |  |
| Ванна | шт | 350000 |  |
| Раковина | шт | 250000 |  |
| Смеситель с душем | шт | 100000 |  |
| Плитка | м^2 | 10000 |  |
| Панель | шт | 5000 |  |
| Обои | рул | 15000 |  |
| Навесной потолок |  |  | 700000 |
| Паркет | м^2 | 15000 |  |
| Доставка |  |  |  |

## Schedule

| ID | WBS | Task | Type | Duration | Start | Finish | Predecessors | Total slack | Free slack | Constraint | Resources | Work | Cost |
| --- | --- | --- | --- | --- | --- | --- | --- | --- | --- | --- | --- | --- | --- |
| 1 | 1 | 1 |  | 2d | 2024-02-07 | 2024-02-08 | 4 | 87d | 78d |  |  |  |  |
| 2 | 2 | Начало проекта | milestone | 0d | 2024-02-01 | 2024-02-01 |  | 52d | 1d |  |  |  |  |
| 3 | 3 | **Выравнивание стен** |  | 15d | 2024-02-02 | 2024-02-19 |  | 78d | 69d |  |  | 120h | 120,000 |
| 4 | 3.1 | Стены в спальне |  | 4d | 2024-02-02 | 2024-02-06 | 2 | 78d | 0d | start no earlier than 2024-02-02 | Штукатур | 32h | 32,000 |
| 5 | 3.2 | Стены в гостиной |  | 4d | 2024-02-07 | 2024-02-11 | 4 | 78d | 0d | start no earlier than 2024-02-06 | Штукатур | 32h | 32,000 |
| 6 | 3.3 | Стены на кухне |  | 3d | 2024-02-12 | 2024-02-14 | 5 | 78d | 0d | start no earlier than 2024-02-09 | Штукатур | 24h | 24,000 |
| 7 | 3.4 | Стены в прихожей |  | 4d | 2024-02-15 | 2024-02-19 | 6 | 78d | 69d | start no earlier than 2024-02-14 | Штукатур | 32h | 32,000 |
| 8 | 4 | Выравнивание стен завершено | milestone | 0d | 2024-02-18 | 2024-02-18 |  | 39d | 25d | start no earlier than 2024-02-18 |  |  |  |
| 9 | 5 | **Санузел** |  | 12d | 2024-02-18 | 2024-03-01 |  | 39d |  |  |  | 84h | 481,000 |
| 10 | 5.1 | Снятие штукатурки в санузле | milestone | 0d | 2024-02-18 | 2024-02-18 | 2 | 42d | 3d | start no earlier than 2024-02-18 | Подсобник | 12h | 6,000 |
| 12 | 5.2 | Отделка потолка санузла |  | 2d | 2024-02-26 | 2024-02-27 |  | 39d | 0d | start no earlier than 2024-02-25 | Плиточник; Панель [5 шт] | 16h | 55,000 |
| 13 | 5.3 | Отделка пола санузла |  | 2d | 2024-02-28 | 2024-02-29 | 12 | 39d | 0d | start no earlier than 2024-02-27 | Плиточник; Плитка [5 м^2] | 16h | 80,000 |
| 14 | 5.4 | Установка сантехнического оборудования |  | 1d | 2024-03-01 | 2024-03-01 | 13 | 39d | 0d | start no earlier than 2024-02-29 | Слесарь-водопроводчик; Унитаз-компакт [1 шт] | 8h | 180,000 |
| 15 | 6 | Ремонт санузла завершен | milestone | 0d | 2024-03-01 | 2024-03-01 | 14 | 39d | 13d | start no earlier than 2024-03-01 |  |  |  |
| 16 | 7 | **Ванная** |  | 13d | 2024-03-03 | 2024-03-17 |  | 26d |  |  |  | 104h | 1,067,000 |
| 17 | 7.1 | Снятие штукатурки в ванной |  | 3d | 2024-03-03 | 2024-03-05 | 2 | 26d | 0d | start no earlier than 2024-03-02 | Подсобник | 24h | 12,000 |
| 18 | 7.2 | Отделка стен ванной |  | 5d | 2024-03-06 | 2024-03-11 | 17 | 26d | 0d | start no earlier than 2024-03-05 | Плиточник; Плитка [10 м^2] | 40h | 175,000 |
| 19 | 7.3 | Отделка потолка ванной |  | 2d | 2024-03-12 | 2024-03-13 | 18 | 26d | 0d | start no earlier than 2024-03-10 | Плиточник; Панель [6 шт] | 16h | 60,000 |
| 20 | 7.4 | Отделка пола ванной |  | 2d | 2024-03-14 | 2024-03-15 | 19 | 26d | 0d | start no earlier than 2024-03-12 | Плиточник; Плитка [6 м^2] | 16h | 90,000 |
| 21 | 7.5 | Установка сантехники |  | 1d | 2024-03-17 | 2024-03-17 | 20 | 26d | 0d | start no earlier than 2024-03-14 | Слесарь-водопроводчик; Ванна [1 шт]; Раковина [1 шт]; Смеситель с душем [1 шт] | 8h | 730,000 |
| 22 | 8 | Ремонт ванной завершен | milestone | 0d | 2024-03-17 | 2024-03-17 | 21 | 26d | 0d | start no earlier than 2024-03-15 |  |  |  |
| 23 | 9 | **Отделка стен** |  | 22d | 2024-03-18 | 2024-04-11 |  | 26d |  |  |  | 256h | 741,000 |
| 24 | 9.1 | Отделка стен в спальне |  | 5d | 2024-03-18 | 2024-03-22 | 8, 15, 22 | 26d | 0d | start no earlier than 2024-03-17 | Штукатур; Обои [8 рул] | 40h | 160,000 |
| 25 | 9.2 | Отделка стен в гостиной |  | 7d | 2024-03-24 | 2024-03-31 | 24 | 26d | 0d | start no earlier than 2024-03-22 | Штукатур; Обои [8 рул] | 56h | 176,000 |
| 26 | 9.3 | Отделка стен на кухне |  | 5d | 2024-04-01 | 2024-04-05 | 25 | 26d | 0d | start no earlier than 2024-03-26 | Штукатур; Плиточник; Плитка [5 м^2]; Панель [10 шт] | 80h | 215,000 |
| 27 | 9.4 | Отделка стен в прихожей |  | 5d | 2024-04-07 | 2024-04-11 | 26 | 26d | 0d | start no earlier than 2024-03-31 | Штукатур; Плиточник; Панель [15 шт] | 80h | 190,000 |
| 28 | 10 | Отделка стен завершена | milestone | 0d | 2024-04-11 | 2024-04-11 | 27 | 33d |  | start no earlier than 2024-04-02 |  |  |  |

| ID | WBS | Task | Type | Duration | Start | Finish | Predecessors | Total slack | Free slack | Constraint | Resources | Work | Cost |
| --- | --- | --- | --- | --- | --- | --- | --- | --- | --- | --- | --- | --- | --- |
| 29 | 11 | **Потолки** |  | 28d | 2024-04-03 | 2024-05-05 |  | 0d |  |  |  | 80h | 840,000 |
| 30 | 11.1 | Замер |  | 2d | 2024-04-03 | 2024-04-04 | 8 | 0d |  | start no earlier than 2024-04-03 | АО «Светлый потолок» | 16h | 20,000 |
| 31 | 11.2 | Заказ и оплата потолков |  | 2d | 2024-04-17 | 2024-04-18 | 30FS+10d | 0d |  | finish no earlier than 2024-04-18 | Навесной потолок |  | 700,000 |
| 32 | 11.3 | Навесной потолок в спальне |  | 2d | 2024-05-01 | 2024-05-02 | 24, 31FS+10d | 6d | 0d | start no earlier than 2024-04-07 | АО «Светлый потолок» | 16h | 20,000 |
| 33 | 11.4 | Навесной потолок в гостиной |  | 2d | 2024-05-03 | 2024-05-05 | 25, 31FS+10d | 0d |  | start no earlier than 2024-04-09 | АО «Светлый потолок» | 16h | 20,000 |
| 34 | 11.5 | Панельный потолок на кухне |  | 2d | 2024-04-19 | 2024-04-21 | 26, 31 | 22d | 5d | start no earlier than 2024-04-11 | Плиточник; Панель [6 шт] | 16h | 60,000 |
| 35 | 11.6 | Навесной потолок в прихожей |  | 2d | 2024-04-19 | 2024-04-21 | 27, 31 | 20d | 8d | start no earlier than 2024-04-13 | АО «Светлый потолок» | 16h | 20,000 |
| 36 | 12 | Монтаж потолков завершен | milestone | 0d | 2024-05-05 | 2024-05-05 | 32, 33, 34, 35 | 13d |  | start no earlier than 2024-04-15 |  |  |  |
| 37 | 13 | **Полы** |  | 20d | 2024-04-28 | 2024-05-20 |  | 0d |  |  |  | 160h | 1,425,000 |
| 38 | 13.1 | Отделка полов в спальне |  | 6d | 2024-05-07 | 2024-05-13 | 32 | 6d |  | start no earlier than 2024-04-16 | Плотник; Паркет [20 м^2] | 48h | 390,000 |
| 39 | 13.2 | Отделка полов в гостиной |  | 6d | 2024-05-14 | 2024-05-20 | 33 | 0d |  | start no earlier than 2024-04-22 | Плотник; Паркет [20 м^2] | 48h | 390,000 |
| 40 | 13.3 | Отделка полов на кухне |  | 3d | 2024-04-28 | 2024-04-30 | 34 | 17d |  | start no earlier than 2024-04-28 | Плотник; Паркет [20 м^2] | 24h | 345,000 |
| 41 | 13.4 | Отделка полов в прихожей |  | 5d | 2024-05-01 | 2024-05-06 | 35 | 12d |  | start no earlier than 2024-05-01 | Плотник; Паркет [15 м^2] | 40h | 300,000 |
| 42 | 14 | Отделка полов завершена | milestone | 0d | 2024-05-20 | 2024-05-20 | 38, 39, 40, 41 | 0d |  | start no earlier than 2024-05-06 |  |  |  |
| 43 | 15 | Конец проекта | milestone | 0d | 2024-05-20 | 2024-05-20 | 42 | 0d |  | start no earlier than 2024-05-07 |  |  |  |
