# 1_part

Schedule from MS Project, 2024-09-06 to 2026-02-05, costs in ₽, A marks actual dates.

## Calendars

- Стандартный: Mon-Fri 09:00-13:00, 14:00-18:00; Sat-Sun off. Exceptions (off unless hours are given): 2024-11-07 (День Октябрьской революции), 2024-12-25 (Рождество Христово), 2025-01-01 to 2025-01-02 (Новый год), 2025-01-07 (Рождество Христово (православие)), 2025-04-29 (Радоница), 2025-05-01 (День труда), 2025-05-09 (День Победы), 2025-07-03 (День Независимости РБ), 2025-11-07 (День Октябрьской революции).

## Resources

| Resource | Unit | Rate | Cost per use |
| --- | --- | --- | --- |
| Архитектор |  |  | 550000 |
| МУП "Горгаз" |  |  | 700000 |
| МУП "Водоканал" |  |  | 500000 |
| АО "Водолей" |  |  | 500000 |
| Рабочий1 |  | 1250 |  |
| Рабочий2 |  | 1250 |  |
| Рабочий3 |  | 1250 |  |
| Подсобник1 |  | 500 |  |
| Подсобник2 |  | 500 |  |
| Трактор |  |  | 70000 |
| Плотник1 |  | 18750 |  |
| Плотник2 |  | 18750 |  |
| АО "Неопласт" |  |  | 1200000 |
| Водопроводчик1 |  | 1000 |  |
| Водопроводчик2 |  | 1000 |  |
| Электрик |  | 1000 |  |
| АО "Газовик" |  |  | 250000 |
| ООО "Потолки" |  |  | 1500000 |
| Песок | т | 5000 |  |
| Щебень | т | 6000 |  |
| Цемент | т | 780000 | 250000 |
| Кирпич | шт | 70 |  |
| Брус |  |  | 250000 |
| Доска обрезная | м3 | 70000 |  |
| Доска необрезная | м3 | 50000 |  |
| Шифер |  |  | 400000 |
| Электропровод |  |  | 150000 |
| Электросчетчик |  |  | 50000 |
| Труба водопроводная |  |  | 350000 |
| Труба канализационная |  |  | 300000 |
| Штукатурка |  |  | 1500000 |
| Потолок | м2 | 1500 |  |
| Окно |  | 100000 |  |
| Дверь наружная |  |  | 200000 |
| Труба отопительная |  |  | 200000 |
| Котел |  |  | 400000 |
| Печь газовая |  |  | 200000 |
| Ванна |  | 450000 |  |
| Унитаз компакт |  | 200000 |  |
| Раковина |  | 160000 |  |
| Кран |  | 70000 |  |
| Паркет | м2 | 5500 |  |
| Труба газовая |  |  | 500000 |
| Дверь внутренняя |  | 90000 |  |
| Доставка |  |  |  |

## Schedule

| ID | WBS | Task | Type | Duration | Start | Finish | Predecessors | Complete | Remaining | Total slack | Free slack | Resources | Work | Actual work | Cost | Actual cost |
| --- | --- | --- | --- | --- | --- | --- | --- | --- | --- | --- | --- | --- | --- | --- | --- | --- |
| 1 | 1 | Начало проекта | milestone | 0d | 2024-09-06 | 2024-09-06 |  |  |  | 6.25d | 0d |  |  |  |  |  |
| 2 | 2 | **Утверждение проектов** |  | 151d | 2024-09-06 | 2025-04-11 |  |  |  | 6.25d |  |  | 1800h |  | 2,250,000 |  |
| 3 | 2.1 | Начало утверждения проектов |  | 1d | 2024-09-06 | 2024-09-06 | 1 |  |  | 6.25d | 0d |  |  |  |  |  |
| 4 | 2.2 | Утверждение проекта на строительство |  | 150d | 2024-09-09 | 2025-04-11 | 3 |  |  | 6.25d | 0d | Архитектор | 720h |  | 550,000 |  |
| 5 | 2.3 | Утверждение проекта на газ |  | 120d | 2024-09-09 | 2025-02-28 | 3 |  |  | 30d |  | МУП "Горгаз" | 480h |  | 700,000 |  |
| 6 | 2.4 | Утверждение проекта на водопровод и канализацию |  | 60d | 2024-09-09 | 2024-12-02 | 3 |  |  | 90d |  | МУП "Водоканал" | 240h |  | 500,000 |  |
| 7 | 2.5 | Утверждение проекта на отпопление |  | 45d | 2024-09-09 | 2024-11-11 | 3 |  |  | 105d |  | АО "Водолей" | 360h |  | 500,000 |  |
| 8 | 2.6 | Проекты утвеждены | milestone | 0d | 2025-04-11 | 2025-04-11 | 4, 5, 6, 7 |  |  | 6.25d | 0d |  |  |  |  |  |
| 9 | 3 | **Строительство фундамента** |  | 47d | 2025-04-14 A | 2025-06-20 |  | 25% | 35.48d | 0d |  |  | 680h | 200h | 3,350,000 | 228,333.33 |
| 10 | 3.1 | Начало закладки фундамента |  | 2d | 2025-04-14 | 2025-04-15 | 8 |  |  | 6.25d | 0d |  |  |  |  |  |
| 11 | 3.2 | Рытье трнашей |  | 10d | 2025-04-16 A | 2025-04-30 | 10 | 42% | 5.83d | 0d |  | Подсобник1; Подсобник2; Рабочий1; Рабочий2; Рабочий3; Трактор | 480h | 200h | 450,000 | 228,333.33 |
| 12 | 3.3 | Заливка фундамента |  | 5d | 2025-06-16 | 2025-06-20 | 11FS+30d |  |  | 0d |  | Доска необрезная [3 м3]; Доставка [0.1%]; Песок [10 т]; Подсобник1; Подсобник2; Рабочий1; Рабочий2; Рабочий3; Цемент [2.5 т]; Щебень [10 т] | 200h |  | 2,900,000 |  |
| 13 | 3.4 | Фундамент завершен | milestone | 0d | 2025-06-20 | 2025-06-20 | 12 |  |  | 0d |  |  |  |  |  |  |
| 14 | 4 | **Каркас и крыша** |  | 111d | 2025-06-23 | 2025-11-26 |  |  |  | 0d |  |  | 3616h |  | 25,320,000 |  |
| 15 | 4.1 | Начало каркаса |  | 1d | 2025-06-23 | 2025-06-23 | 13 |  |  | 0d |  |  |  |  |  |  |
| 16 | 4.2 | Кладка стен |  | 60d | 2025-06-24 | 2025-09-16 | 15 |  |  | 0d |  | Доставка [0.1%]; Подсобник1; Подсобник2; Рабочий1; Рабочий2; Рабочий3; Кирпич [70000 шт]; Песок [6 т]; Цемент [2 т] | 2400h |  | 9,270,000 |  |
| 17 | 4.3 | Перекрытие стен |  | 15d | 2025-09-17 | 2025-10-07 | 16 |  |  | 0d |  | Брус [1500%]; Доска обрезная [7 м3]; Доставка [0.1%]; Подсобник1; Подсобник2; Рабочий1; Рабочий2; Рабочий3 | 600h |  | 1,460,000 |  |
| 18 | 4.4 | Установка крыши |  | 30d | 2025-10-08 | 2025-11-19 | 17 |  |  | 5d |  | Доска необрезная [10 м3]; Доставка [0.1%]; Плотник1; Плотник2; Шифер [2000%] | 480h |  | 10,020,000 |  |
| 19 | 4.5 | Установка наружных дверей и окон |  | 7d | 2025-10-08 | 2025-10-16 | 17 |  |  | 28d |  | АО "Неопласт"; Дверь наружная; Окно [900%] | 56h |  | 2,300,000 |  |
| 20 | 4.6 | Установка полов |  | 5d | 2025-11-20 | 2025-11-26 | 17 |  |  | 0d |  | Доска обрезная [10 м3]; Доставка [0.1%]; Плотник1; Плотник2 | 80h |  | 2,270,000 |  |
| 21 | 4.7 | Каркас готов | milestone | 0d | 2025-11-26 | 2025-11-26 | 18, 19, 20 |  |  | 0d |  |  |  |  |  |  |
| 22 | 5 | **Коммуникации** |  | 11d | 2025-11-27 | 2025-12-11 |  |  |  | 0d |  |  | 240h |  | 1,800,000 |  |
| 23 | 5.1 | Начало установки коммуникаций |  | 1d | 2025-11-27 | 2025-11-27 | 21 |  |  | 0d |  |  |  |  |  |  |
| 24 | 5.2 | Проведение и подключение водопровода и канализации |  | 10d | 2025-11-28 | 2025-12-11 | 23 |  |  | 0d |  | Водопроводчик1; Водопроводчик2; Труба водопроводная; Труба канализационная | 160h |  | 810,000 |  |
| 25 | 5.3 | Установка и подключение электропроводки |  | 5d | 2025-11-28 | 2025-12-04 | 23 |  |  | 5d |  | Электрик; Электропровод [10000%]; Электросчетчик | 40h |  | 240,000 |  |
| 26 | 5.4 | Установка и подключение газовых коммуникаций |  | 5d | 2025-11-28 | 2025-12-04 | 23 |  |  | 5d |  | АО "Газовик"; Труба газовая | 40h |  | 750,000 |  |
| 27 | 5.5 | Коммуникации готовы | milestone | 0d | 2025-12-11 | 2025-12-11 | 24, 25, 26 |  |  | 0d |  |  |  |  |  |  |

| ID | WBS | Task | Type | Duration | Start | Finish | Predecessors | Total slack | Constraint | Resources | Work | Cost |
| --- | --- | --- | --- | --- | --- | --- | --- | --- | --- | --- | --- | --- |
| 28 | 6 | **Внутренняя отделка** |  | 40d | 2025-12-11 | 2026-02-05 |  | 0d |  |  | 960h | 5,879,000 |
| 29 | 6.1 | Начало отделки | milestone | 0d | 2025-12-11 | 2025-12-11 | 27 | 0d |  |  |  |  |
| 30 | 6.2 | Внутренние двери |  | 10d | 2025-12-12 | 2025-12-25 | 29 | 0d |  |  |  |  |
| 31 | 6.3 | Навесные потолки |  | 5d | 2025-12-26 | 2026-01-01 | 30 | 5d |  |  |  |  |
| 32 | 6.4 | Отделка стен |  | 3d | 2026-01-13 | 2026-01-15 | 30 | 0d | as late as possible | Подсобник1; Подсобник2; Рабочий1; Рабочий2; Рабочий3; Штукатурка [10000%] | 120h | 1,614,000 |
| 33 | 6.5 | Монтаж отопления |  | 10d | 2025-12-26 | 2026-01-08 | 30 | 0d |  | Водопроводчик1; Водопроводчик2; Труба отопительная | 160h | 360,000 |
| 34 | 6.6 | Установка оборудования, приборов, сантехники |  | 5d | 2026-01-09 | 2026-01-15 | 31, 33 | 0d |  | Ванна; Водопроводчик1; Водопроводчик2; Котел; Кран [400%]; Печь газовая; Раковина [300%]; Унитаз компакт [200%] | 80h | 2,290,000 |
| 35 | 6.7 | Настил полов |  | 15d | 2026-01-16 | 2026-02-05 | 32, 34 | 0d |  | Паркет [190 м2]; Подсобник1; Подсобник2; Рабочий1; Рабочий2; Рабочий3 | 600h | 1,615,000 |
| 36 | 6.8 | Конец отделки | milestone | 0d | 2026-02-05 | 2026-02-05 | 35 | 0d |  |  |  |  |
| 37 | 6.9 | Конец проекта | milestone | 0d | 2026-02-05 | 2026-02-05 | 36 | 0d |  |  |  |  |
